Schedule from MS Project, 2016-02-15 to 2016-10-20.
Hewlett-Packard

## Calendars

- Standard: Mon-Fri 08:00-12:00, 13:00-17:00; Sat-Sun off.

## Resources

| Resource |
| --- |
| PM1 |
| PM2 |
| PM3 |
| PM4 |
| PM5 |
| RE4 |
| RE5 |
| RE76 |
| RE7 |
| RE8 |
| RE9 |
| RE10 |
| RE11 |
| RE12 |
| SE1 |
| SE2 |
| SE3 |
| SE4 |
| SE5 |
| SE6 |
| SE7 |
| SE8 |
| SE9 |
| PE21 |
| PE22 |
| PE23 |
| PE24 |
| PE25 |
| PE26 |
| PE27 |
| PE28 |
| PE29 |
| TE41 |
| TE42 |
| TE43 |
| TE44 |
| TE45 |
| TE46 |
| TE47 |
| TE48 |
| TE49 |
| DE41 |
| DE42 |
| DE43 |
| DE44 |
| DE45 |
| DE46 |
| DE47 |
| DE48 |

## Schedule

| ID | WBS | Task | Duration | Start | Finish | Predecessors | Total slack | Resources | Work |
| --- | --- | --- | --- | --- | --- | --- | --- | --- | --- |
| 1 | 1 | **Project 1** | 178.96d | 2016-02-15 | 2016-10-20 |  | 0d |  | 6329.57h |
| 2 | 1.1 | **Project Plan** | 20.16d | 2016-02-15 | 2016-03-14 |  | 0d |  | 471.04h |
| 3 | 1.1.1 | Write Plan | 10.56d | 2016-02-15 | 2016-02-29 |  | 0d | PM2 | 84.48h |
| 4 | 1.1.2 | **Review Plan** | 8.8d | 2016-02-29 | 2016-03-11 | 3 | 0d |  | 380.16h |
| 5 | 1.1.2.1 | Preparation for Review | 5.28d | 2016-02-29 | 2016-03-07 | 3 | 0d | DE41; PE21; RE4; SE1; TE41 | 211.2h |
| 6 | 1.1.2.2 | Review Meeting | 3.52d | 2016-03-07 | 2016-03-11 | 5 | 0d | DE41; PE21; RE4; SE1; PM2; TE41 | 168.96h |
| 7 | 1.1.3 | Rework | 0.8d | 2016-03-11 | 2016-03-14 | 6 | 0d | PM2 | 6.4h |
| 8 | 1.2 | **Risk Mitigation and Contingency Plan** | 5.39d | 2016-03-14 | 2016-03-21 | 7 | 0d |  | 116.32h |
| 9 | 1.2.1 | Write Plan | 2.5d | 2016-03-14 | 2016-03-16 | 7 | 0d | PM3 | 20h |
| 10 | 1.2.2 | **Review Plan** | 2.08d | 2016-03-16 | 2016-03-18 | 9 | 0d |  | 89.84h |
| 11 | 1.2.2.1 | Preparation for Review | 1.25d | 2016-03-16 | 2016-03-17 | 9 | 0d | DE41; PE21; RE4; SE1; TE41 | 50h |
| 12 | 1.2.2.2 | Review Meeting | 0.83d | 2016-03-17 | 2016-03-18 | 11 | 0d | DE41; PE21; RE4; SE1; PM3; TE41 | 39.84h |
| 13 | 1.2.3 | Rework | 0.81d | 2016-03-18 | 2016-03-21 | 12 | 0d | PM3 | 6.48h |
| 14 | 1.3 | **Requirement** | 26.55d | 2016-03-21 | 2016-04-27 | 13 | 0d |  | 979.2h |
| 15 | 1.3.1 | Write Requirements | 1.79d | 2016-03-21 | 2016-03-23 | 13 | 0d | RE4; RE5; RE7 | 42.96h |
| 16 | 1.3.2 | Write Use Case Model | 13.8d | 2016-03-23 | 2016-04-12 | 15 | 0d | RE4; RE5; RE7; RE8; RE9 | 552h |
| 17 | 1.3.3 | **Review Requirements/Use Case Model** | 9.96d | 2016-04-12 | 2016-04-26 | 16 | 0d |  | 360.24h |
| 18 | 1.3.3.1 | Preparation for review | 1.34d | 2016-04-12 | 2016-04-13 | 16 | 0d | DE41; PE21; SE1; TE41 | 42.88h |
| 20 | 1.3.3.2 | Review Meeting | 2.44d | 2016-04-18 | 2016-04-21 |  | 0d | DE41; PE21; RE4; SE1; TE41 | 97.6h |
| 22 | 1.3.4 | Rework | 1d | 2016-04-26 | 2016-04-27 |  | 0d | RE4; RE5; RE7 | 24h |
| 23 | 1.4 | **Analysis** | 6.2d | 2016-04-27 | 2016-05-05 | 22 | 0d |  | 176.08h |
| 24 | 1.4.1 | Write Analysis Document | 1.38d | 2016-04-27 | 2016-04-28 | 22 | 0d | SE1; SE2 | 22h |
| 25 | 1.4.2 | **Review Analysis Document** | 4.12d | 2016-04-28 | 2016-05-04 | 24 | 0d |  | 142.8h |
| 26 | 1.4.2.1 | Preparation for Analysis Document | 2.75d | 2016-04-28 | 2016-05-03 | 24 | 0d | DE44; PE21; RE4; TE44 | 88h |
| 27 | 1.4.2.2 | Review Meeting | 1.37d | 2016-05-03 | 2016-05-04 | 26 | 0d | DE44; PE21; RE4; TE44; SE1 | 54.8h |
| 28 | 1.4.3 | Rework | 0.7d | 2016-05-04 | 2016-05-05 | 27 | 0d | SE1; SE2 | 11.28h |

| ID | WBS | Task | Duration | Start | Finish | Predecessors | Total slack | Free slack | Resources | Work |
| --- | --- | --- | --- | --- | --- | --- | --- | --- | --- | --- |
| 29 | 1.5 | **Design** | 19.2d | 2016-05-05 | 2016-06-01 | 28 | 0d |  |  | 505.6h |
| 30 | 1.5.1 | Write DD | 3.44d | 2016-05-05 | 2016-05-10 | 28 | 0d |  | SE1; SE2 | 54.96h |
| 31 | 1.5.2 | **Review DD** | 4.12d | 2016-05-10 | 2016-05-16 | 30 | 0d |  |  | 142.8h |
| 32 | 1.5.2.1 | Preparation for DD | 2.75d | 2016-05-10 | 2016-05-13 | 30 | 0d |  | DE41; PE21; RE4; TE41 | 88h |
| 33 | 1.5.2.2 | Review Meeting | 1.37d | 2016-05-13 | 2016-05-16 | 32 | 0d |  | DE41; PE21; RE4; TE44; SE1 | 54.8h |
| 34 | 1.5.3 | Rework | 1.65d | 2016-05-16 | 2016-05-18 | 33 | 0d |  | SE1; SE2 | 26.4h |
| 35 | 1.5.4 | Write Data Model (DM) | 4.17d | 2016-05-18 | 2016-05-24 | 34 | 0d |  | SE1; SE2; SE3 | 100h |
| 36 | 1.5.5 | **Review DM** | 4.16d | 2016-05-24 | 2016-05-30 | 35 | 0d |  |  | 141.44h |
| 37 | 1.5.5.1 | Preparation for DM | 3.12d | 2016-05-24 | 2016-05-27 | 35 | 0d |  | DE41; PE21; RE4; TE41 | 99.84h |
| 38 | 1.5.5.2 | Review Meeting | 1.04d | 2016-05-27 | 2016-05-30 | 37 | 0d |  | DE41; PE21; RE4; TE41; SE1 | 41.6h |
| 39 | 1.5.6 | Rework | 1.67d | 2016-05-30 | 2016-06-01 | 38 | 0d |  | SE1; SE2; SE3 | 40h |
| 40 | 1.6 | **Coding and Unit Test** | 65.92d | 2016-06-01 | 2016-09-01 | 39 | 0d |  |  | 2348.53h |
| 41 | 1.6.1 | Write Code | 29.03d | 2016-06-01 | 2016-07-12 | 39 | 0d |  | PE21; PE22; PE23; PE24; PE25 | 1161.2h |
| 42 | 1.6.2 | **Unit Testing** | 14.38d | 2016-07-12 | 2016-08-01 | 41 | 0d |  |  | 544.4h |
| 43 | 1.6.2.1 | Prepare/Execute Test Cases | 5.25d | 2016-07-12 | 2016-07-19 | 41 | 0d |  | PE21; PE22; PE23; PE24; PE25 | 210h |
| 44 | 1.6.2.2 | Fixed Found Defects | 7.2d | 2016-07-19 | 2016-07-28 | 43 | 0d |  | PE21; PE22; PE23; PE24; PE25 | 288h |
| 45 | 1.6.2.3 | Test Fixed Defects | 1.93d | 2016-07-28 | 2016-08-01 | 44 | 0d |  | PE21; PE22; PE23 | 46.4h |
| 46 | 1.6.3 | **Code Inspection** | 22.51d | 2016-08-01 | 2016-09-01 | 45 | 0d |  |  | 642.93h |
| 47 | 1.6.3.1 | Prepare for Code Inspection | 9.67d | 2016-08-01 | 2016-08-15 | 45 | 0d |  | DE41; RE4; TE41; SE1 | 309.33h |
| 48 | 1.6.3.2 | Code Inspection Meeting | 10.47d | 2016-08-15 | 2016-08-30 | 47 | 0d |  | DE41; PE21; RE4; TE41; SE1 | 257.6h |
| 49 | 1.6.3.3 | Rework | 2.38d | 2016-08-30 | 2016-09-01 | 48 | 0d |  | PE21; PE22; PE23; PE24 | 76h |
| 50 | 1.7 | **Testing** | 116.97d | 2016-04-27 | 2016-10-07 | 22 | 0d |  |  | 1286.24h |
| 51 | 1.7.1 | Write Test Plan (TP) | 6.18d | 2016-04-27 | 2016-05-05 | 22 | 77.94d | 0d | TE41; TE42; TE43; TE47 | 197.68h |
| 52 | 1.7.2 | **Review TP** | 7.2d | 2016-05-05 | 2016-05-16 | 51 | 77.94d |  |  | 242h |
| 53 | 1.7.2.1 | Preparation for TP | 4.32d | 2016-05-05 | 2016-05-11 | 51 | 77.94d | 0d | DE42; PE22; SE3; RE5 | 138.24h |
| 54 | 1.7.2.2 | Review TP Meeting | 2.16d | 2016-05-11 | 2016-05-13 | 53 | 77.94d | 0d | DE42; PE22; SE3; RE5; TE42 | 86.4h |
| 55 | 1.7.2.3 | Rework | 0.72d | 2016-05-13 | 2016-05-16 | 54 | 77.94d |  | TE41; TE42; TE43 | 17.36h |
| 56 | 1.7.3 | Execute TP (Test Cases) | 9.65d | 2016-09-01 | 2016-09-15 | 49, 55 | 0d |  | TE41; TE42; TE43; TE44 | 308.96h |
| 57 | 1.7.4 | Fix Found Defects | 9.6d | 2016-09-15 | 2016-09-28 | 56 | 0d |  | PE21; PE22; PE23; PE24; PE25 | 384h |
| 58 | 1.7.5 | Test Fixed Defects | 6.4d | 2016-09-28 | 2016-10-07 | 57 | 0d |  | TE41; TE42; TE43 | 153.6h |

| ID | WBS | Task | Duration | Start | Finish | Predecessors | Total slack | Resources | Work |
| --- | --- | --- | --- | --- | --- | --- | --- | --- | --- |
| 59 | 1.8 | **Documentation** | 126.86d | 2016-04-27 | 2016-10-20 | 22 | 0d |  | 446.56h |
| 60 | 1.8.1 | User documentation | 3.13d | 2016-04-27 | 2016-05-02 | 22 | 113.84d | DE41; DE42; DE43; DE45 | 100.32h |
| 61 | 1.8.2 | **Review UD** | 9.88d | 2016-10-07 | 2016-10-20 | 60, 58 | 0d |  | 346.24h |
| 62 | 1.8.2.1 | Preparation for UD Review | 5.37d | 2016-10-07 | 2016-10-14 | 60, 58 | 0d | PE21; RE4; SE1; TE41 | 171.84h |
| 63 | 1.8.2.2 | Review UD Meeting | 3.76d | 2016-10-14 | 2016-10-20 | 62 | 0d | PE21; RE4; SE1; TE41; DE41 | 150.4h |
| 64 | 1.8.2.3 | Rework | 0.75d | 2016-10-20 | 2016-10-20 | 63 | 0d | DE41; DE42; DE43; DE45 | 24h |
