Schedule from MS Project, 2016-02-29 to 2016-08-03.
Hewlett-Packard

## Calendars

- Standard: Mon-Fri 08:00-12:00, 13:00-17:00; Sat-Sun off.

## Resources

| Resource |
| --- |
| RE5 |
| SE2 |
| SE3 |
| SE4 |
| SE5 |
| SE6 |
| SE7 |
| SE8 |
| SE9 |
| PE22 |
| PE23 |
| PE25 |
| PE26 |
| PE27 |
| TE42 |
| TE46 |
| TE48 |
| TE49 |
| DE42 |
| DE43 |
| DE44 |
| DE45 |
| DE46 |
| PM8 |
| RE210 |
| RE211 |
| RE212 |
| PE211 |
| PE212 |
| PE213 |
| PE214 |
| PE215 |
| PE216 |
| TE191 |
| TE192 |
| TE194 |
| TE195 |

## Schedule

| ID | WBS | Task | Duration | Start | Finish | Predecessors | Total slack | Free slack | Resources | Work |
| --- | --- | --- | --- | --- | --- | --- | --- | --- | --- | --- |
| 1 | 1 | **Project 2** | 112.66d | 2016-02-29 | 2016-08-03 |  | 0d |  |  | 5164.88h |
| 2 | 1.1 | **Project Plan** | 13.35d | 2016-02-29 | 2016-03-17 |  | 0d |  |  | 273.76h |
| 3 | 1.1.1 | Write Plan | 7.31d | 2016-02-29 | 2016-03-09 |  | 0d |  | PM8 | 58.48h |
| 4 | 1.1.2 | **Review Plan** | 4.76d | 2016-03-09 | 2016-03-16 | 3 | 0d |  |  | 205.04h |
| 5 | 1.1.2.1 | Preparation for review | 2.93d | 2016-03-09 | 2016-03-14 | 3 | 0d |  | DE42; PE22; RE5; SE2; TE42 | 117.2h |
| 6 | 1.1.2.2 | Review meeting | 1.83d | 2016-03-14 | 2016-03-16 | 5 | 0d |  | DE42; PE22; RE5; SE2; TE42; PM8 | 87.84h |
| 7 | 1.1.3 | Rework | 1.28d | 2016-03-16 | 2016-03-17 | 6 | 0d |  | PM8 | 10.24h |
| 8 | 1.2 | **Requirement** | 15.51d | 2016-03-17 | 2016-04-07 | 7 | 0d |  |  | 480.24h |
| 9 | 1.2.1 | Write Requirement | 1.57d | 2016-03-17 | 2016-03-18 | 7 | 0d |  | RE210; RE211; RE212 | 37.6h |
| 10 | 1.2.2 | **Review Requirements** | 12.23d | 2016-03-18 | 2016-04-06 | 9 | 0d |  |  | 428.96h |
| 11 | 1.2.2.1 | Preparation for review | 7.53d | 2016-03-18 | 2016-03-30 | 9 | 0d |  | DE42; PE22; SE2; TE42 | 240.96h |
| 12 | 1.2.2.2 | Review meeting | 4.7d | 2016-03-30 | 2016-04-06 | 11 | 0d |  | DE42; PE22; SE2; TE42; RE210 | 188h |
| 13 | 1.2.3 | Rework | 1.71d | 2016-04-06 | 2016-04-07 | 12 | 0d |  | RE210 | 13.68h |
| 15 | 1.3 | **Lab and Enviornment Setup** | 9.59d | 2016-04-07 | 2016-04-21 | 13 | 0d |  |  | 201.44h |
| 16 | 1.3.1 | **Hardware** | 5.69d | 2016-04-07 | 2016-04-15 | 13 | 0d |  |  | 139.04h |
| 17 | 1.3.1.1 | Install Server | 3d | 2016-04-07 | 2016-04-12 | 13 | 0d |  | SE6; SE7; SE8; SE9 | 96h |
| 18 | 1.3.1.2 | Install Clients | 2.69d | 2016-04-12 | 2016-04-15 | 17 | 0d |  | SE8; SE9 | 43.04h |
| 19 | 1.3.2 | **Software** | 3.9d | 2016-04-15 | 2016-04-21 | 18 | 0d |  |  | 62.4h |
| 20 | 1.3.2.1 | Install Development Tools | 1.65d | 2016-04-15 | 2016-04-19 | 18 | 0d |  | SE7; SE8 | 26.4h |
| 21 | 1.3.2.2 | Install Testing Tools | 2.25d | 2016-04-19 | 2016-04-21 | 20 | 0d |  | SE7; SE8 | 36h |
| 23 | 1.4 | **Analysis/Design Document** | 7.33d | 2016-04-07 | 2016-04-19 | 13 | 2.25d |  |  | 200.8h |
| 24 | 1.4.1 | Write DD | 1.49d | 2016-04-07 | 2016-04-11 | 13 | 2.25d | 0d | SE3; SE2 | 23.84h |
| 25 | 1.4.2 | **Review DD** | 4.47d | 2016-04-11 | 2016-04-15 | 24 | 2.25d |  |  | 154.96h |
| 26 | 1.4.2.1 | Prepation for DD | 2.98d | 2016-04-11 | 2016-04-14 | 24 | 2.25d | 0d | DE42; PE22; RE210; TE191 | 95.36h |
| 27 | 1.4.2.2 | Review meeting | 1.49d | 2016-04-14 | 2016-04-15 | 26 | 2.25d | 0d | DE42; PE22; RE210; TE191; SE3 | 59.6h |
| 28 | 1.4.3 | Rework | 1.38d | 2016-04-15 | 2016-04-19 | 27 | 2.25d | 0d | SE3; SE2 | 22h |

| ID | WBS | Task | Duration | Start | Finish | Predecessors | Total slack | Free slack | Resources | Work |
| --- | --- | --- | --- | --- | --- | --- | --- | --- | --- | --- |
| 30 | 1.5 | **Data Model** | 12.55d | 2016-04-19 | 2016-05-05 | 28 | 63.92d |  |  | 176.64h |
| 31 | 1.5.1 | Create Data Model | 7.63d | 2016-04-19 | 2016-04-28 | 28 | 63.92d | 0d | SE4 | 61.04h |
| 32 | 1.5.2 | **Review Data Model** | 2.86d | 2016-04-28 | 2016-05-03 | 31 | 63.92d |  |  | 99.12h |
| 33 | 1.5.2.1 | Prepation for DM | 1.91d | 2016-04-28 | 2016-05-02 | 31 | 63.92d | 0d | PE23; RE211; TE192; DE46 | 61.12h |
| 34 | 1.5.2.2 | Review Meeting | 0.95d | 2016-05-02 | 2016-05-03 | 33 | 63.92d | 0d | PE23; RE211; TE192; DE46; SE4 | 38h |
| 35 | 1.5.3 | Rework | 2.06d | 2016-05-03 | 2016-05-05 | 34 | 63.92d |  | SE4 | 16.48h |
| 37 | 1.6 | **Coding and Unit Test** | 54.26d | 2016-04-21 | 2016-07-06 | 21, 28 | 0d |  |  | 2526.8h |
| 38 | 1.6.1 | Write Code | 19.02d | 2016-04-21 | 2016-05-18 | 21, 28 | 0d |  | PE211; PE212; PE213; PE214; PE215; PE216; PE27 | 1065.2h |
| 39 | 1.6.2 | **Unit Testing** | 21.4d | 2016-05-18 | 2016-06-16 | 38 | 0d |  |  | 976.08h |
| 40 | 1.6.2.1 | Prepation/Execute Test Cases | 6.52d | 2016-05-18 | 2016-05-26 | 38 | 0d |  | PE211; PE212; PE213; PE214; PE215; PE216 | 313.04h |
| 41 | 1.6.2.2 | Fix Found Defects | 8.5d | 2016-05-26 | 2016-06-08 | 40 | 0d |  | PE211; PE212; PE213; PE214; PE215; PE216 | 408h |
| 42 | 1.6.2.3 | Test Fixed Defects | 6.38d | 2016-06-08 | 2016-06-16 | 41 | 0d |  | PE211; PE212; PE213; PE214; PE215 | 255.04h |
| 43 | 1.6.3 | **Code Inspection** | 11.99d | 2016-06-16 | 2016-07-04 | 42 | 0d |  |  | 426.32h |
| 44 | 1.6.3.1 | Preparation for Code Inspection | 6.66d | 2016-06-16 | 2016-06-27 | 42 | 0d |  | DE42; RE210; SE4; TE191 | 213.12h |
| 45 | 1.6.3.2 | Code Inspection Meeting | 5.33d | 2016-06-27 | 2016-07-04 | 44 | 0d |  | DE42; RE210; SE4; TE191; PE211 | 213.2h |
| 46 | 1.6.4 | Rework | 1.85d | 2016-07-04 | 2016-07-06 | 45 | 0d |  | PE211; PE212; PE213; PE214 | 59.2h |
| 48 | 1.7 | **Testing** | 72.65d | 2016-04-07 | 2016-07-19 | 13 | 0d |  |  | 885.84h |
| 49 | 1.7.1 | Write Test Plan (TP) | 7.56d | 2016-04-07 | 2016-04-19 | 13 | 48.04d | 0d | TE46; TE48; TE49; TE194; TE195 | 302.4h |
| 50 | 1.7.2 | **Review TP** | 8.24d | 2016-04-19 | 2016-04-29 | 49 | 48.04d |  |  | 264.24h |
| 51 | 1.7.2.1 | Preparion for TP | 4.73d | 2016-04-19 | 2016-04-26 | 49 | 48.04d | 0d | DE46; RE210; SE5; PE25 | 151.36h |
| 52 | 1.7.2.2 | Review TP Meeting | 2.36d | 2016-04-26 | 2016-04-28 | 51 | 48.04d | 0d | DE46; RE210; SE5; PE25; TE46 | 94.4h |
| 53 | 1.7.2.3 | Rework | 1.16d | 2016-04-28 | 2016-04-29 | 52 | 48.04d |  | TE46; TE48 | 18.48h |
| 54 | 1.7.3 | Execute TP (Test Cases) | 4.68d | 2016-07-06 | 2016-07-13 | 46, 53, 21 | 0d |  | TE46; TE48; TE49; TE194; TE195 | 187.2h |
| 55 | 1.7.4 | Fix Found Defects | 4.12d | 2016-07-13 | 2016-07-19 | 54 | 0d |  | PE211; PE212; PE213; PE214 | 132h |

| ID | WBS | Task | Duration | Start | Finish | Predecessors | Total slack | Resources | Work |
| --- | --- | --- | --- | --- | --- | --- | --- | --- | --- |
| 57 | 1.8 | **Documentation** | 83.8d | 2016-04-07 | 2016-08-03 | 13 | 0d |  | 419.36h |
| 58 | 1.8.1 | User Documentation | 1.54d | 2016-04-07 | 2016-04-11 | 13 | 71.11d | DE43; DE44; DE45; DE46 | 49.44h |
| 59 | 1.8.2 | **Review UD** | 11.15d | 2016-07-19 | 2016-08-03 | 58, 55 | 0d |  | 369.92h |
| 60 | 1.8.2.1 | Prepation for UD | 6.18d | 2016-07-19 | 2016-07-27 | 58, 55 | 0d | RE210; SE5; TE191; PE26 | 197.76h |
| 61 | 1.8.2.2 | Review UD Meeting | 3.86d | 2016-07-27 | 2016-08-02 | 60 | 0d | RE210; SE5; TE191; DE43; PE26 | 154.4h |
| 62 | 1.8.2.3 | Rework | 1.11d | 2016-08-02 | 2016-08-03 | 61 | 0d | DE43; DE44 | 17.76h |
