Schedule from MS Project, 2016-04-04 to 2016-09-13.
Hewlett-Packard

## Calendars

- Standard: Mon-Fri 08:00-12:00, 13:00-17:00; Sat-Sun off.

## Resources

| Resource |
| --- |
| PM5 |
| RE76 |
| SE4 |
| SE9 |
| PE27 |
| PE29 |
| DE45 |
| DE47 |
| DE48 |
| PM8 |
| PM9 |
| RE211 |
| RE212 |
| RE213 |
| RE215 |
| PE214 |
| PE215 |
| PE216 |
| TE192 |
| TE195 |
| TE196 |
| SE74107 |
| SE74108 |
| TE3811 |
| TE73812 |
| PE6017 |

## Schedule

| ID | WBS | Task | Duration | Start | Finish | Predecessors | Total slack | Free slack | Resources | Work |
| --- | --- | --- | --- | --- | --- | --- | --- | --- | --- | --- |
| 1 | 1 | **Project 3** | 116.2d | 2016-04-04 | 2016-09-13 |  | 0d |  |  | 3014.4h |
| 2 | 1.1 | **Project Plan** | 8.61d | 2016-04-04 | 2016-04-14 |  | 0d |  |  | 184.08h |
| 3 | 1.1.1 | Write Plan | 4.75d | 2016-04-04 | 2016-04-08 |  | 0d |  | PM8 | 38h |
| 4 | 1.1.2 | **Review Plan** | 3.26d | 2016-04-08 | 2016-04-14 | 3 | 0d |  |  | 141.28h |
| 5 | 1.1.2.1 | Preparation for review | 1.9d | 2016-04-08 | 2016-04-12 | 3 | 0d |  | DE47; PE29; RE76; TE192; SE4 | 76h |
| 6 | 1.1.2.2 | Review meeting | 1.36d | 2016-04-12 | 2016-04-14 | 5 | 0d |  | DE47; PE29; RE76; SE4; TE192; PM8 | 65.28h |
| 7 | 1.1.3 | Rework | 0.6d | 2016-04-14 | 2016-04-14 | 6 | 0d |  | PM8 | 4.8h |
| 9 | 1.2 | **Documented Software Development Process Updates** | 4.17d | 2016-04-14 | 2016-04-20 | 7 | 0d |  |  | 116.88h |
| 10 | 1.2.1 | Process Changes | 0.55d | 2016-04-14 | 2016-04-15 | 7 | 0d |  | PM8; PM9 | 8.8h |
| 11 | 1.2.2 | **Review Changes** | 2.93d | 2016-04-15 | 2016-04-20 | 10 | 0d |  |  | 102.56h |
| 12 | 1.2.2.1 | Preparation for review | 1.83d | 2016-04-15 | 2016-04-18 | 10 | 0d |  | DE47; PE29; RE76; TE196 | 58.56h |
| 13 | 1.2.2.2 | Review meeting | 1.1d | 2016-04-18 | 2016-04-20 | 12 | 0d |  | DE47; PE29; RE76; PM8; TE196 | 44h |
| 14 | 1.2.3 | Rework | 0.69d | 2016-04-20 | 2016-04-20 | 13 | 0d |  | PM8 | 5.52h |
| 16 | 1.3 | **Requirement** | 5.3d | 2016-04-20 | 2016-04-28 | 14 | 0d |  |  | 176.16h |
| 17 | 1.3.1 | Write requirements | 1.05d | 2016-04-20 | 2016-04-21 | 14 | 0d |  | RE211; RE212; RE213 | 25.28h |
| 18 | 1.3.2 | **Review requirements** | 3.91d | 2016-04-21 | 2016-04-27 | 17 | 0d |  |  | 142.8h |
| 19 | 1.3.2.1 | Preparation for review | 1.7d | 2016-04-21 | 2016-04-25 | 17 | 0d |  | DE47; PE29; RE76; SE9 | 54.4h |
| 20 | 1.3.2.2 | Review meeting | 2.21d | 2016-04-25 | 2016-04-27 | 19 | 0d |  | DE47; PE29; RE76; SE9; RE211 | 88.4h |
| 21 | 1.3.3 | Rework | 0.34d | 2016-04-27 | 2016-04-28 | 20 | 0d |  | RE211; RE212; RE213 | 8.08h |
| 23 | 1.4 | **Build the development and testing lab environment** | 19.43d | 2016-04-14 | 2016-05-12 | 7 | 0.43d |  |  | 270.8h |
| 24 | 1.4.1 | **Hardware environment** | 7.8d | 2016-04-14 | 2016-04-26 | 7 | 0.43d |  |  | 124.8h |
| 25 | 1.4.1.1 | Servers | 5d | 2016-04-14 | 2016-04-21 | 7 | 0.43d | 0d | SE74107; SE74108 | 80h |
| 26 | 1.4.1.2 | Clients | 2.8d | 2016-04-21 | 2016-04-26 | 25 | 0.43d | 0d | SE74107; SE74108 | 44.8h |
| 27 | 1.4.2 | **Software Development Tools** | 0.62d | 2016-04-26 | 2016-04-27 | 26 | 0.43d |  |  | 10h |
| 28 | 1.4.2.1 | Build/Compile Tools | 0.62d | 2016-04-26 | 2016-04-27 | 26 | 0.43d | 0d | SE74108; SE74107 | 10h |

| ID | WBS | Task | Duration | Start | Finish | Predecessors | Total slack | Free slack | Resources | Work |
| --- | --- | --- | --- | --- | --- | --- | --- | --- | --- | --- |
| 29 | 1.4.3 | **Software Testing Tools** | 11d | 2016-04-27 | 2016-05-12 | 28 | 0.43d |  |  | 136h |
| 30 | 1.4.3.1 | Test Cases execution tools | 6d | 2016-04-27 | 2016-05-05 | 28 | 0.43d | 0d | SE74107; SE74108 | 96h |
| 31 | 1.4.3.2 | Simulation tools | 5d | 2016-05-05 | 2016-05-12 | 30 | 0.43d |  | SE74107 | 40h |
| 33 | 1.5 | **Analysis** | 5.43d | 2016-05-05 | 2016-05-12 | 21 | 0d |  |  | 115.44h |
| 34 | 1.5.1 | Write Analysis Document | 1.8d | 2016-05-05 | 2016-05-06 | 21 | 0d |  | SE74108 | 14.4h |
| 35 | 1.5.2 | **Review Analysis Documents** | 2.7d | 2016-05-06 | 2016-05-11 | 34 | 0d |  |  | 93.6h |
| 36 | 1.5.2.1 | Preparation for review | 1.8d | 2016-05-06 | 2016-05-10 | 34 | 0d |  | DE47; PE29; RE76; SE9 | 57.6h |
| 37 | 1.5.2.2 | Review meeting | 0.9d | 2016-05-10 | 2016-05-11 | 36 | 0d |  | DE47; PE29; RE76; SE9; SE74108 | 36h |
| 38 | 1.5.3 | Rework | 0.93d | 2016-05-11 | 2016-05-12 | 37 | 0d |  | SE74108 | 7.44h |
| 40 | 1.6 | **Design** | 7.59d | 2016-05-12 | 2016-05-24 | 31, 38 | 0d |  |  | 136.72h |
| 41 | 1.6.1 | Write Design Document (DD) | 2.71d | 2016-05-12 | 2016-05-17 | 31, 38 | 0d |  | SE74107 | 21.68h |
| 42 | 1.6.2 | **Review DD** | 2.85d | 2016-05-17 | 2016-05-20 | 41 | 0d |  |  | 98.8h |
| 43 | 1.6.2.1 | Preparation for review | 1.9d | 2016-05-17 | 2016-05-19 | 41 | 0d |  | DE47; PE29; RE76; SE9 | 60.8h |
| 44 | 1.6.2.2 | Review meeting | 0.95d | 2016-05-19 | 2016-05-20 | 43 | 0d |  | DE47; PE29; RE76; SE9; SE74107 | 38h |
| 45 | 1.6.3 | Rework | 2.03d | 2016-05-20 | 2016-05-24 | 44 | 0d |  | SE74107 | 16.24h |
| 47 | 1.7 | **Coding** | 62.67d | 2016-05-24 | 2016-08-18 | 45 | 0d |  |  | 1129.2h |
| 48 | 1.7.1 | Write Code | 40.54d | 2016-05-24 | 2016-07-19 | 45 | 0d |  | PE6017; PE216; PE215 | 545.44h |
| 49 | 1.7.2 | **Unit Testing** | 14.38d | 2016-07-19 | 2016-08-08 | 48 | 0d |  |  | 345.04h |
| 50 | 1.7.2.1 | Preparation/Execution of Test Cases | 5.38d | 2016-07-19 | 2016-07-26 | 48 | 0d |  | PE6017; PE29; PE27 | 129.04h |
| 51 | 1.7.2.2 | Fix found defects | 7.2d | 2016-07-26 | 2016-08-05 | 50 | 0d |  | PE27; PE6017; PE29 | 172.8h |
| 52 | 1.7.2.3 | Test fixed defects | 1.8d | 2016-08-05 | 2016-08-08 | 51 | 0d |  | PE29; PE6017; PE27 | 43.2h |
| 53 | 1.7.3 | **Code Inspection** | 7.76d | 2016-08-08 | 2016-08-18 | 52 | 0d |  |  | 238.72h |
| 54 | 1.7.3.1 | Preparation for Code Inspection | 3.41d | 2016-08-08 | 2016-08-12 | 52 | 0d |  | DE47; PE29; RE76; SE9 | 109.12h |
| 55 | 1.7.3.2 | Code Inspection Meeting | 2.5d | 2016-08-12 | 2016-08-16 | 54 | 0d |  | DE47; PE29; RE76; SE9; PE6017 | 100h |
| 56 | 1.7.3.3 | Rework | 1.85d | 2016-08-16 | 2016-08-18 | 55 | 0d |  | PE6017; PE29 | 29.6h |

| ID | WBS | Task | Duration | Start | Finish | Predecessors | Total slack | Free slack | Resources | Work |
| --- | --- | --- | --- | --- | --- | --- | --- | --- | --- | --- |
| 58 | 1.8 | **Testing** | 88.49d | 2016-04-28 | 2016-08-30 | 21 | 0d |  |  | 531.92h |
| 59 | 1.8.1 | Write Test Plans | 2.8d | 2016-04-28 | 2016-05-02 | 21 | 71.49d | 0d | TE3811; TE73812; TE196; TE195 | 89.6h |
| 60 | 1.8.2 | **Review Test Plans** | 6.36d | 2016-05-02 | 2016-05-11 | 59 | 71.49d |  |  | 191.36h |
| 61 | 1.8.2.1 | Preparation for review | 3.5d | 2016-05-02 | 2016-05-06 | 59 | 71.49d | 0d | DE48; PE6017; RE215; PM5 | 112h |
| 62 | 1.8.2.2 | Review meeting | 1.4d | 2016-05-06 | 2016-05-09 | 61 | 71.49d | 0d | DE48; PE6017; RE215; PM5; TE73812 | 56h |
| 63 | 1.8.2.3 | Rework | 1.46d | 2016-05-09 | 2016-05-11 | 62 | 71.49d |  | TE73812; TE3811 | 23.36h |
| 64 | 1.8.3 | Execute Test Plans | 4.09d | 2016-08-18 | 2016-08-24 | 56, 63 | 0d |  | TE3811; TE73812; TE196; TE195 | 130.96h |
| 65 | 1.8.4 | Fix found defects | 2.25d | 2016-08-24 | 2016-08-29 | 64 | 0d |  | PE6017; PE216; PE215; PE214 | 72h |
| 66 | 1.8.5 | Test fixed defects | 1.5d | 2016-08-29 | 2016-08-30 | 65 | 0d |  | TE73812; TE3811; TE196; TE195 | 48h |
| 68 | 1.9 | **Documentation** | 98.12d | 2016-04-28 | 2016-09-13 | 21 | 0d |  |  | 353.2h |
| 69 | 1.9.1 | User Documentation | 7.22d | 2016-04-28 | 2016-05-09 | 21 | 81.27d |  | DE45 | 57.76h |
| 70 | 1.9.2 | **Review UD** | 9.63d | 2016-08-30 | 2016-09-13 | 66, 69 | 0d |  |  | 295.44h |
| 71 | 1.9.2.1 | Preparation for UD | 4.82d | 2016-08-30 | 2016-09-06 | 66, 69 | 0d |  | DE48; PE6017; RE215; PM5 | 154.24h |
| 72 | 1.9.2.2 | Review meeting | 3.21d | 2016-09-06 | 2016-09-09 | 71 | 0d |  | DE48; PE6017; RE215; PM5; DE45 | 128.4h |
| 73 | 1.9.2.3 | Rework | 1.6d | 2016-09-09 | 2016-09-13 | 72 | 0d |  | DE45 | 12.8h |
